# Bifacial Solar Characterizer

How a schedule from GanttProject changed from version to version. A marks actual dates.

## Version 1 (saved 2016-01-22)

Note of the change: house cleaning...

| ID | WBS | Task | Duration | Start | Finish | Predecessors | Complete |
| --- | --- | --- | --- | --- | --- | --- | --- |
| 1 | 1 | **Draft Proposal** | 3d | 2015-09-30 | 2015-10-02 |  | 50% |
| 2 |  | Schedule | 1d | 2015-09-30 | 2015-09-30 |  | 100% |
| 3 |  | Background | 1d | 2015-10-02 | 2015-10-02 |  |  |
| 4 |  | Proposal | 4d | 2015-10-05 | 2015-10-09 | 1 |  |
| 5 |  | Identify Customer Requirements | 5d | 2015-09-28 | 2015-10-02 |  | 90% |
| 6 | 4 | **Physical - Mechanical Design** | 43d | 2015-10-05 | 2015-12-03 | 5 |  |
| 7 | 4.1 | **Linear motion** | 24d | 2015-10-05 | 2015-11-06 |  |  |
| 8 |  | Identify possible options | 2d | 2015-10-05 | 2015-10-06 |  |  |
| 9 |  | Design | 5d | 2015-10-07 | 2015-10-14 | 5, 8 |  |
| 10 |  | Procure components | 10d | 2015-10-15 | 2015-10-28 | 9 |  |
| 11 |  | Test | 5d | 2015-10-29 | 2015-11-04 | 10 |  |
| 12 |  | Document | 2d | 2015-11-05 | 2015-11-06 | 11 |  |
| 13 | 4.2 | **Rotational motion** | 29d | 2015-10-05 | 2015-11-13 |  |  |
| 14 |  | Identify possible options | 3d | 2015-10-05 | 2015-10-07 |  |  |
| 15 |  | Design | 7d | 2015-10-09 | 2015-10-19 | 5, 14 |  |
| 16 |  | Procure components | 10d | 2015-10-20 | 2015-11-02 | 15 |  |
| 17 |  | Test | 7d | 2015-11-03 | 2015-11-11 | 16 |  |
| 18 |  | Document | 2d | 2015-11-12 | 2015-11-13 | 17 |  |
| 19 | 4.3 | **Position determination** | 31d | 2015-10-09 | 2015-11-20 |  |  |
| 20 |  | Identify possible options | 5d | 2015-10-09 | 2015-10-15 |  |  |
| 21 |  | Design | 7d | 2015-10-16 | 2015-10-26 | 5, 20 |  |
| 22 |  | Procure components | 10d | 2015-10-27 | 2015-11-09 | 21 |  |
| 23 |  | Test | 7d | 2015-11-10 | 2015-11-18 | 22 |  |
| 24 |  | pDocument | 2d | 2015-11-19 | 2015-11-20 | 23 |  |
| 25 | 4.4 | **Frame / Mounting** | 41d | 2015-10-06 | 2015-12-02 |  |  |
| 26 |  | Identify possible options | 2d | 2015-10-06 | 2015-10-07 |  |  |
| 27 |  | Design | 5d | 2015-10-27 | 2015-11-02 | 9, 15, 21, 26 |  |
| 28 |  | Procure components | 20d | 2015-11-03 | 2015-11-30 | 27 |  |
| 29 |  | Test | 1d | 2015-12-01 | 2015-12-01 | 28 |  |
| 30 |  | Document | 1d | 2015-12-02 | 2015-12-02 | 29 |  |
| 31 |  | Implement Mechanical Design | 1d | 2015-12-03 | 2015-12-03 | 11, 17, 23, 30 |  |
| 32 | 5 | **Electronic / Interface design** | 56d | 2015-10-06 | 2015-12-23 | 5 | 5% |
| 33 | 5.1 | **Processor** | 19d | 2015-10-06 | 2015-11-02 |  | 21% |
| 34 |  | Identify possible options | 3d | 2015-10-06 | 2015-10-09 |  | 100% |
| 35 |  | Choose | 1d | 2015-10-12 | 2015-10-12 | 34 | 100% |
| 36 |  | Procure component | 10d | 2015-10-13 | 2015-10-26 | 35 |  |
| 37 |  | Test | 2d | 2015-10-27 | 2015-10-28 | 36 |  |
| 38 |  | Document | 3d | 2015-10-29 | 2015-11-02 | 37 |  |
| 39 | 5.2 | **Solar Sensor** | 26d | 2015-10-06 | 2015-11-11 |  |  |
| 40 |  | Identify possible options | 5d | 2015-10-06 | 2015-10-13 |  |  |
| 41 |  | Choose | 2d | 2015-10-14 | 2015-10-15 | 40 |  |
| 42 |  | Procure component | 15d | 2015-10-16 | 2015-11-05 | 41 |  |
| 43 |  | Test | 2d | 2015-11-06 | 2015-11-09 | 42 |  |
| 44 |  | Document | 2d | 2015-11-10 | 2015-11-11 | 43 |  |
| 45 | 5.3 | **Electronic Connections / Interfacing** | 32d | 2015-11-10 | 2015-12-23 |  |  |
| 46 |  | Identify possible options | 2d | 2015-11-10 | 2015-11-11 | 10, 16, 22, 36, 42 |  |
| 47 |  | Design | 7d | 2015-11-12 | 2015-11-20 | 46 |  |
| 48 |  | Procure parts / Assemble | 10d | 2015-11-23 | 2015-12-04 | 47 |  |
| 49 |  | Test | 5d | 2015-12-07 | 2015-12-11 | 48 |  |
| 50 |  | Document | 1d | 2015-12-14 | 2015-12-14 | 49 |  |
| 51 |  | Implement | 7d | 2015-12-15 | 2015-12-23 | 50 |  |
| 52 | 6 | **Software Design** | 37d | 2015-12-24 | 2016-02-16 | 5 |  |
| 53 |  | Identify Design options | 5d | 2015-12-24 | 2015-12-31 | 51 |  |
| 54 |  | Design | 10d | 2016-01-04 | 2016-01-15 | 53 |  |
| 55 |  | Test | 15d | 2016-01-18 | 2016-02-05 | 54 |  |
| 56 |  | Document | 7d | 2016-02-08 | 2016-02-16 | 55 |  |
| 57 |  | Software Implementation / Mechanical - Electrical changes | 10d | 2016-02-17 | 2016-03-01 | 56 |  |
| 58 |  | Fall Progress Report | 10d | 2015-11-26 | 2015-12-09 |  |  |
| 59 |  | Draft Final Report | 22d | 2016-02-12 | 2016-03-14 |  |  |
| 60 |  | Final Report | 10d | 2016-03-28 | 2016-04-08 | 59 |  |
| 61 |  | Poster Fair | 19d | 2016-02-23 | 2016-03-18 |  |  |

## Version 2 (saved 2016-02-23)

Note of the change: Merge remote-tracking branch 'refs/remotes/origin/master' into tyler

Last finish stays 2016-04-08. Complete tasks 3 → 20.

Changed:

| ID | Task | Complete | Other |
| --- | --- | --- | --- |
| 1 | **Draft Proposal** | 50% → 100% |  |
| 3 | Background | 0% → 100% |  |
| 4 | Proposal | 0% → 100% |  |
| 6 | **Physical - Mechanical Design** | 0% → 56% |  |
| 7 | **Linear motion** | 0% → 70% |  |
| 8 | Identify possible options | 0% → 100% |  |
| 9 | Design | 0% → 100% |  |
| 10 | Procure components | 0% → 100% |  |
| 19 | **Position determination** | 0% → 70% |  |
| 20 | Identify possible options | 0% → 100% |  |
| 21 | Design | 0% → 100% |  |
| 22 | Procure components | 0% → 100% |  |
| 24 | Document |  | was named pDocument |
| 25 | **Frame / Mounting** | 0% → 81% |  |
| 26 | Identify possible options | 0% → 100% |  |
| 27 | Design | 0% → 75% |  |
| 28 | Procure components | 0% → 90% |  |
| 31 | Implement Mechanical Design | 0% → 10% |  |
| 32 | **Electronic / Interface design** | 5% → 78% |  |
| 33 | **Processor** | 21% → 84% |  |
| 36 | Procure component | 0% → 100% |  |
| 37 | Test | 0% → 100% |  |
| 39 | **Solar Sensor** | 0% → 93% |  |
| 40 | Identify possible options | 0% → 100% |  |
| 41 | Choose | 0% → 100% |  |
| 42 | Procure component | 0% → 100% |  |
| 43 | Test | 0% → 100% |  |
| 44 | Document | 0% → 10% |  |
| 45 | **Electronic Connections / Interfacing** | 0% → 64% |  |
| 46 | Identify possible options | 0% → 100% |  |
| 47 | Design | 0% → 100% |  |
| 48 | Procure parts / Assemble | 0% → 90% |  |
| 49 | Test | 0% → 50% |  |
| 52 | **Software Design** | 0% → 8% |  |
| 53 | Identify Design options | 0% → 50% |  |
| 54 | Design | 0% → 5% |  |
